Schedule from MS Project, 2021-09-15 to 2022-01-05, costs in ¥, A marks actual dates.

## Calendars

- 标准: Mon-Fri 08:00-12:00, 13:00-17:00; Sat-Sun off.

## Resources

| Resource | Rate |
| --- | --- |
| 吴联想 | 49.56 |
| 郑航舰 | 49.56 |
| 王义博 | 49.56 |
| 1 |  |

## Schedule

| ID | WBS | Task | Type | Duration | Start | Finish | Predecessors | Complete | Remaining | Actual start | Actual finish | Constraint | Resources | Work | Actual work | Cost | Actual cost |
| --- | --- | --- | --- | --- | --- | --- | --- | --- | --- | --- | --- | --- | --- | --- | --- | --- | --- |
| 1 | 1 | **项目开发** |  | 81d? | 2021-09-15 A | 2022-01-05 |  | 99% | 0.7d? |  |  |  |  | 603.4h | 602.4h | 29,904.5 | 29,854.94 |
| 2 | 1.1 | **项目介绍及PPT** |  | 1d | 2021-09-15 A | 2021-09-15 A |  | 100% |  |  |  |  |  | 6h | 6h | 297.36 | 297.36 |
| 3 | 1.1.1 | 课题选择 |  | 0.25d | 2021-09-15 A | 2021-09-15 A |  | 100% |  |  |  |  | 吴联想 | 2h | 2h | 99.12 | 99.12 |
| 4 | 1.1.2 | 项目介绍word |  | 0.25d | 2021-09-15 A | 2021-09-15 A |  | 100% |  |  |  |  | 郑航舰 | 2h | 2h | 99.12 | 99.12 |
| 5 | 1.1.3 | 项目介绍PPT |  | 0.25d | 2021-09-15 A | 2021-09-15 A |  | 100% |  |  |  |  | 王义博 | 2h | 2h | 99.12 | 99.12 |
| 6 | 1.1.4 | 项目介绍评审 | manual | 1d | 2021-09-15 A | 2021-09-15 A |  | 100% |  |  |  |  |  |  |  |  |  |
| 7 | 1.2 | **项目计划及PPT** |  | 6d? | 2021-09-22 A | 2021-09-29 | 2 | 100% |  |  | 2021-09-28 |  |  | 10h | 10h | 495.6 | 495.6 |
| 8 | 1.2.1 | 小组会议 |  | 0.12d? | 2021-09-22 A | 2021-09-22 A |  | 100% |  |  |  |  | 吴联想; 王义博; 郑航舰 | 1h | 1h | 49.56 | 49.56 |
| 9 | 1.2.2 | 会议纪要撰写 | manual | 1d | 2021-09-22 A | 2021-09-22 A |  | 100% |  |  |  |  | 吴联想 | 1h | 1h | 49.56 | 49.56 |
| 10 | 1.2.3 | 项目计划word初稿 |  | 0.25d? | 2021-09-22 A | 2021-09-22 A |  | 100% |  |  |  |  | 郑航舰 | 2h | 2h | 99.12 | 99.12 |
| 11 | 1.2.4 | 小组会议 |  | 0.12d? | 2021-09-24 A | 2021-09-24 A |  | 100% |  |  |  | start no earlier than 2021-09-24 | 吴联想 | 1h | 1h | 49.56 | 49.56 |
| 12 | 1.2.5 | 会议纪要撰写 | manual | 1d | 2021-09-24 A | 2021-09-24 A |  | 100% |  |  |  |  | 吴联想 | 1h | 1h | 49.56 | 49.56 |
| 13 | 1.2.6 | 项目计划初版修订 |  | 0.25d? | 2021-09-27 A | 2021-09-27 A |  | 100% |  |  |  | start no earlier than 2021-09-27 | 郑航舰 | 2h | 2h | 99.12 | 99.12 |
| 14 | 1.2.7 | 项目计划PPT制作 |  | 0.25d? | 2021-09-28 A | 2021-09-28 A |  | 100% |  |  |  | start no earlier than 2021-09-28 | 王义博 | 2h | 2h | 99.12 | 99.12 |
| 15 | 1.2.8 | 项目计划评审 | manual | 1d | 2021-09-22 A | 2021-09-22 A |  | 100% |  |  |  |  |  |  |  |  |  |
| 16 | 1.3 | **项目计划修订** |  | 10d? | 2021-09-30 | 2021-10-13 A | 7 | 100% |  | 2021-10-02 |  |  |  | 14h | 14h | 693.84 | 693.84 |
| 17 | 1.3.1 | 项目计划修订 | manual | 2d | 2021-10-02 A | 2021-10-04 A |  | 100% |  |  |  |  | 郑航舰 | 2h | 2h | 99.12 | 99.12 |
| 18 | 1.3.2 | 小组会议 | manual | 1d | 2021-10-03 A | 2021-10-03 A |  | 100% |  |  |  |  | 吴联想; 王义博; 郑航舰 | 1h | 1h | 49.56 | 49.56 |
| 19 | 1.3.3 | 会议纪要撰写 | manual | 1d | 2021-10-03 A | 2021-10-03 A |  | 100% |  |  |  |  | 吴联想 | 1h | 1h | 49.56 | 49.56 |
| 20 | 1.3.4 | 项目计划PPT修订 | manual | 2d | 2021-10-05 A | 2021-10-06 A |  | 100% |  |  |  |  | 王义博 | 2h | 2h | 99.12 | 99.12 |
| 21 | 1.3.5 | 团建 | manual | 1d | 2021-10-07 A | 2021-10-07 A |  | 100% |  |  |  |  | 吴联想 | 2h | 2h | 99.12 | 99.12 |
| 22 | 1.3.6 | 可行性分析 | manual | 1d | 2021-10-13 A | 2021-10-13 A |  | 100% |  |  |  |  | 吴联想 | 2h | 2h | 99.12 | 99.12 |
| 23 | 1.3.7 | 项目计划书修订 | manual | 1d | 2021-10-13 A | 2021-10-13 A |  | 100% |  |  |  |  | 郑航舰 | 2h | 2h | 99.12 | 99.12 |
| 24 | 1.3.8 | 项目计划PPT修订 | manual | 1d | 2021-10-13 A | 2021-10-13 A |  | 100% |  |  |  |  | 王义博 | 2h | 2h | 99.12 | 99.12 |
| 25 | 1.3.9 | 项目计划评审 | manual | 1d | 2021-10-13 A | 2021-10-13 A |  | 100% |  |  |  |  |  |  |  |  |  |

| ID | WBS | Task | Type | Duration | Start | Finish | Predecessors | Complete | Actual start | Actual finish | Resources | Work | Actual work | Cost | Actual cost |
| --- | --- | --- | --- | --- | --- | --- | --- | --- | --- | --- | --- | --- | --- | --- | --- |
| 26 | 1.4 | **可行性分析报告** |  | 8d? | 2021-10-14 | 2021-10-23 A | 16 | 100% | 2021-10-15 |  |  | 30h | 30h | 1,486.8 | 1,486.8 |
| 27 | 1.4.1 | 小组会议 | manual | 1d | 2021-10-22 A | 2021-10-22 A |  | 100% |  |  | 吴联想; 王义博; 郑航舰 | 1h | 1h | 49.56 | 49.56 |
| 28 | 1.4.2 | 会议纪要撰写 | manual | 1d | 2021-10-22 A | 2021-10-22 A |  | 100% |  |  | 吴联想 | 1h | 1h | 49.56 | 49.56 |
| 29 | 1.4.3 | 可行性分析报告初稿 | manual | 1d | 2021-10-16 A | 2021-10-16 A |  | 100% |  |  | 郑航舰 | 2h | 2h | 99.12 | 99.12 |
| 30 | 1.4.4 | 可行性分析 | manual | 1d | 2021-10-15 A | 2021-10-15 A |  | 100% |  |  | 吴联想 | 2h | 2h | 99.12 | 99.12 |
| 31 | 1.4.5 | 绘制数据流图 | manual | 1d | 2021-10-15 A | 2021-10-15 A |  | 100% |  |  | 郑航舰 | 2h | 2h | 99.12 | 99.12 |
| 32 | 1.4.6 | 绘制系统流程图 | manual | 1d | 2021-10-15 A | 2021-10-15 A |  | 100% |  |  | 郑航舰 | 2h | 2h | 99.12 | 99.12 |
| 33 | 1.4.7 | 可行性分析修改 | manual | 1d | 2021-10-16 A | 2021-10-16 A |  | 100% |  |  | 王义博 | 2h | 2h | 99.12 | 99.12 |
| 34 | 1.4.8 | 可行性分析报告评审 | manual | 1d | 2021-10-20 A | 2021-10-20 A |  | 100% |  |  |  |  |  |  |  |
| 35 | 1.4.9 | 复查系统规模和目标 | manual | 1d | 2021-10-22 A | 2021-10-22 A |  | 100% |  |  | 吴联想 | 2h | 2h | 99.12 | 99.12 |
| 36 | 1.4.10 | 研究目前正在使用的系统 | manual | 1d | 2021-10-23 A | 2021-10-23 A |  | 100% |  |  | 王义博 | 2h | 2h | 99.12 | 99.12 |
| 37 | 1.4.11 | 导出新系统的高层逻辑模型 | manual | 1d | 2021-10-23 A | 2021-10-23 A |  | 100% |  |  | 王义博 | 2h | 2h | 99.12 | 99.12 |
| 38 | 1.4.12 | 进一步定义问题 | manual | 1d | 2021-10-23 A | 2021-10-23 A |  | 100% |  |  | 王义博; 吴联想 | 2h | 2h | 99.12 | 99.12 |
| 39 | 1.4.13 | 导出和评价供选择的解法 | manual | 1d | 2021-10-23 A | 2021-10-23 A |  | 100% |  |  | 王义博; 郑航舰 | 2h | 2h | 99.12 | 99.12 |
| 40 | 1.4.14 | 推荐行动方针 | manual | 1d | 2021-10-23 A | 2021-10-23 A |  | 100% |  |  | 郑航舰 | 2h | 2h | 99.12 | 99.12 |
| 41 | 1.4.15 | 草拟开发计划 | manual | 1d | 2021-10-23 A | 2021-10-23 A |  | 100% |  |  |  |  |  |  |  |
| 42 | 1.4.16 | 书写文档提交审查 | manual | 1d | 2021-10-23 A | 2021-10-23 A |  | 100% |  |  | 吴联想 | 2h | 2h | 99.12 | 99.12 |
| 43 | 1.4.17 | 项目计划书修订 | manual | 1d | 2021-10-23 A | 2021-10-23 A |  | 100% |  |  | 郑航舰 | 2h | 2h | 99.12 | 99.12 |
| 44 | 1.4.18 | 可行性分析报告修订 | manual | 1d | 2021-10-23 A | 2021-10-23 A |  | 100% |  |  | 郑航舰 | 2h | 2h | 99.12 | 99.12 |
| 45 | 1.5 | **需求说明SRS，需求评审PPT** |  | 8d | 2021-10-21 | 2021-10-31 | 26 | 100% | 2021-10-22 | 2021-10-29 |  | 42h | 42h | 2,081.52 | 2,081.52 |
| 46 | 1.5.1 | 需求说明初稿 | manual | 0.25d | 2021-10-22 A | 2021-10-22 A |  | 100% |  |  | 郑航舰 | 2h | 2h | 99.12 | 99.12 |
| 47 | 1.5.2 | 小组会议 | manual | 1d | 2021-10-23 A | 2021-10-23 A |  | 100% |  |  | 吴联想; 王义博; 郑航舰 | 1h | 1h | 49.56 | 49.56 |
| 48 | 1.5.3 | 会议纪要撰写 | manual | 1d | 2021-10-23 A | 2021-10-23 A |  | 100% |  |  | 吴联想 | 1h | 1h | 49.56 | 49.56 |
| 49 | 1.5.4 | 界面原型设计 | manual | 1d | 2021-10-24 A | 2021-10-24 A |  | 100% |  |  | 郑航舰 | 2h | 2h | 99.12 | 99.12 |

| ID | WBS | Task | Type | Duration | Start | Finish | Predecessors | Complete | Actual start | Resources | Work | Actual work | Cost | Actual cost |
| --- | --- | --- | --- | --- | --- | --- | --- | --- | --- | --- | --- | --- | --- | --- |
| 50 | 1.5.5 | **确定对系统的综合要求** |  | 0d | 2021-10-24 A | 2021-10-24 A |  | 100% |  | 郑航舰; 吴联想 | 16h | 16h | 792.96 | 792.96 |
| 51 | 1.5.5.1 | 功能需求 | manual | 1d | 2021-10-24 A | 2021-10-24 A |  | 100% |  | 吴联想 | 2h | 2h | 99.12 | 99.12 |
| 52 | 1.5.5.2 | 性能需求 | manual | 1d | 2021-10-24 A | 2021-10-24 A |  | 100% |  | 吴联想 | 2h | 2h | 99.12 | 99.12 |
| 53 | 1.5.5.3 | 可靠性和可用性需求 | manual | 1d | 2021-10-24 A | 2021-10-24 A |  | 100% |  | 吴联想 | 2h | 2h | 99.12 | 99.12 |
| 54 | 1.5.5.4 | 出错处理需求 | manual | 1d | 2021-10-24 A | 2021-10-24 A |  | 100% |  | 吴联想 | 2h | 2h | 99.12 | 99.12 |
| 55 | 1.5.5.5 | 接口需求 | manual | 1d | 2021-10-24 A | 2021-10-24 A |  | 100% |  | 郑航舰 | 2h | 2h | 99.12 | 99.12 |
| 56 | 1.5.5.6 | 约束 | manual | 1d | 2021-10-24 A | 2021-10-24 A |  | 100% |  | 郑航舰 | 2h | 2h | 99.12 | 99.12 |
| 57 | 1.5.5.7 | 逆向需求 | manual | 1d | 2021-10-24 A | 2021-10-24 A |  | 100% |  | 郑航舰 | 2h | 2h | 99.12 | 99.12 |
| 58 | 1.5.5.8 | 将来可能提出的需求 | manual | 1d | 2021-10-24 A | 2021-10-24 A |  | 100% |  | 郑航舰 | 2h | 2h | 99.12 | 99.12 |
| 59 | 1.5.6 | 分析系统的数据要求 | manual | 1d | 2021-10-24 A | 2021-10-24 A |  | 100% |  | 王义博 | 2h | 2h | 99.12 | 99.12 |
| 60 | 1.5.7 | **导出系统的逻辑模型** |  | 0d | 2021-10-24 A | 2021-10-24 A |  | 100% |  | 王义博 | 8h | 8h | 396.48 | 396.48 |
| 61 | 1.5.7.1 | 绘制ER图 | manual | 1d | 2021-10-24 A | 2021-10-24 A |  | 100% |  | 王义博 | 2h | 2h | 99.12 | 99.12 |
| 62 | 1.5.7.2 | 绘制层次方框图 | manual | 1d | 2021-10-24 A | 2021-10-24 A |  | 100% |  | 王义博 | 2h | 2h | 99.12 | 99.12 |
| 63 | 1.5.7.3 | 数据流图 | manual | 1d | 2021-10-24 A | 2021-10-24 A |  | 100% |  | 王义博 | 2h | 2h | 99.12 | 99.12 |
| 64 | 1.5.7.4 | 数据字典 | manual | 1d | 2021-10-24 A | 2021-10-24 A |  | 100% |  | 王义博 | 2h | 2h | 99.12 | 99.12 |
| 65 | 1.5.8 | 需求说明初稿修改 | manual | 1d | 2021-10-24 A | 2021-10-24 A |  | 100% |  | 郑航舰; 王义博; 吴联想 | 2h | 2h | 99.12 | 99.12 |
| 66 | 1.5.9 | 需求说明PPT | manual | 1.12d | 2021-10-24 A | 2021-10-25 A |  | 100% |  | 王义博 | 2h | 2h | 99.12 | 99.12 |
| 67 | 1.5.10 | 项目计划书、project更新 | manual | 1d | 2021-10-24 A | 2021-10-24 A |  | 100% |  | 郑航舰 | 1h | 1h | 49.56 | 49.56 |
| 68 | 1.5.11 | 根据客户修改界面原型 | manual | 1d | 2021-10-25 A | 2021-10-25 A |  | 100% |  | 郑航舰 | 2h | 2h | 99.12 | 99.12 |
| 69 | 1.5.12 | PPT更新 | manual | 1d | 2021-10-27 A | 2021-10-27 A |  | 100% |  | 王义博 | 1h | 1h | 49.56 | 49.56 |
| 70 | 1.5.13 | 需求说明预评审 | manual | 1d | 2021-10-27 A | 2021-10-27 A |  | 100% |  |  |  |  |  |  |
| 71 | 1.5.14 | 小组会议 | manual | 0.04d | 2021-10-29 A | 2021-10-29 A |  | 100% |  | 王义博; 吴联想; 郑航舰 | 1h | 1h | 49.56 | 49.56 |
| 72 | 1.5.15 | 会议纪要撰写 | manual | 1d | 2021-10-29 A | 2021-10-29 A |  | 100% |  | 吴联想 | 1h | 1h | 49.56 | 49.56 |
| 73 | 1.6 | **SRS修订** |  | 5d? | 2021-10-28 | 2021-11-03 A | 45 | 100% | 2021-10-31 |  | 14.9h | 14.9h | 738.44 | 738.44 |
| 74 | 1.6.1 | 访谈 | manual | 1d | 2021-10-31 A | 2021-10-31 A |  | 100% |  | 吴联想 | 1h | 1h | 49.56 | 49.56 |
| 75 | 1.6.2 | 小组会议 | manual | 1d | 2021-10-31 A | 2021-10-31 A |  | 100% |  | 吴联想; 王义博; 郑航舰 | 1h | 1h | 49.56 | 49.56 |
| 76 | 1.6.3 | 会议纪要撰写 | manual | 1d | 2021-10-31 A | 2021-10-31 A |  | 100% |  | 吴联想 | 1h | 1h | 49.56 | 49.56 |
| 77 | 1.6.4 | 需求说明修订 | manual | 1d | 2021-10-31 A | 2021-10-31 A |  | 100% |  | 郑航舰 | 0.5h | 0.5h | 24.78 | 24.78 |
| 78 | 1.6.5 | 需求说明PPT修改 | manual | 1d | 2021-10-31 A | 2021-10-31 A |  | 100% |  | 王义博 | 2h | 2h | 99.12 | 99.12 |
| 79 | 1.6.6 | 管理员界面模型 | manual | 1d | 2021-10-31 A | 2021-10-31 A |  | 100% |  | 王义博 | 2h | 2h | 99.12 | 99.12 |
| 80 | 1.6.7 | 找女用户代表询问并得到反馈 | manual | 1d | 2021-10-31 A | 2021-10-31 A |  | 100% |  | 郑航舰 | 1h | 1h | 49.56 | 49.56 |
| 81 | 1.6.8 | 根据用户反馈修改界面原型 | manual | 1d | 2021-10-31 A | 2021-10-31 A |  | 100% |  | 郑航舰 | 2h | 2h | 99.12 | 99.12 |
| 82 | 1.6.9 | GIT创建分支 | manual | 1d | 2021-10-31 A | 2021-10-31 A |  | 100% |  | 吴联想 | 2h | 2h | 99.12 | 99.12 |
| 83 | 1.6.10 | 更新project | manual | 1d | 2021-10-31 A | 2021-10-31 A |  | 100% |  | 郑航舰 | 0.4h | 0.4h | 19.82 | 19.82 |
| 84 | 1.6.11 | SRS评审 | manual | 1d | 2021-11-03 A | 2021-11-03 A |  | 100% |  |  |  |  |  |  |
| 85 | 1.6.12 | 界面原型修改 | manual | 1d | 2021-11-03 A | 2021-11-03 A |  | 100% |  | 郑航舰 | 2h | 2h | 99.12 | 99.12 |

| ID | WBS | Task | Type | Duration | Start | Finish | Predecessors | Complete | Actual start | Actual finish | Resources | Work | Actual work | Cost | Actual cost |
| --- | --- | --- | --- | --- | --- | --- | --- | --- | --- | --- | --- | --- | --- | --- | --- |
| 86 | 1.7 | **总体设计报告** |  | 5d? | 2021-11-04 A | 2021-11-10 A | 73 | 100% |  |  |  | 26.5h | 26.5h | 1,313.34 | 1,313.34 |
| 87 | 1.7.1 | 界面原型修改 | manual | 1d | 2021-11-04 A | 2021-11-04 A |  | 100% |  |  | 王义博; 郑航舰 | 1.5h | 1.5h | 74.34 | 74.34 |
| 88 | 1.7.2 | 小组会议 | manual | 1d | 2021-11-05 A | 2021-11-05 A |  | 100% |  |  | 吴联想; 王义博; 郑航舰 | 1h | 1h | 49.56 | 49.56 |
| 89 | 1.7.3 | 会议纪要撰写 | manual | 1d | 2021-11-05 A | 2021-11-05 A |  | 100% |  |  | 吴联想 | 1h | 1h | 49.56 | 49.56 |
| 90 | 1.7.4 | 总体设计报告初稿 | manual | 1d | 2021-11-05 A | 2021-11-05 A |  | 100% |  |  | 郑航舰 | 1h | 1h | 49.56 | 49.56 |
| 91 | 1.7.5 | 设想供选择的方案 | manual | 1d | 2021-11-05 A | 2021-11-05 A |  | 100% |  |  | 郑航舰 | 2h | 2h | 99.12 | 99.12 |
| 92 | 1.7.6 | 选择合理的方案 | manual | 1d | 2021-11-05 A | 2021-11-05 A |  | 100% |  |  | 郑航舰 | 2h | 2h | 99.12 | 99.12 |
| 93 | 1.7.7 | 推荐最佳方案 | manual | 1d | 2021-11-05 A | 2021-11-05 A |  | 100% |  |  | 王义博; 吴联想; 郑航舰 | 2h | 2h | 99.12 | 99.12 |
| 94 | 1.7.8 | 功能分解 | manual | 1d | 2021-11-05 A | 2021-11-05 A |  | 100% |  |  | 王义博 | 2h | 2h | 99.12 | 99.12 |
| 95 | 1.7.9 | 设计软件结构 | manual | 2d | 2021-11-06 A | 2021-11-08 A |  | 100% |  |  | 王义博 | 2h | 2h | 99.12 | 99.12 |
| 96 | 1.7.10 | 设计数据库 | manual | 2d | 2021-11-06 A | 2021-11-08 A |  | 100% |  |  | 吴联想 | 2h | 2h | 99.12 | 99.12 |
| 97 | 1.7.11 | 制定测试计划 | manual | 2d | 2021-11-06 A | 2021-11-08 A |  | 100% |  |  | 吴联想 | 2h | 2h | 99.12 | 99.12 |
| 98 | 1.7.12 | 书写文档 | manual | 1d | 2021-11-06 A | 2021-11-06 A |  | 100% |  |  | 郑航舰 | 2h | 2h | 99.12 | 99.12 |
| 99 | 1.7.13 | 审查和复查 | manual | 1d | 2021-11-06 A | 2021-11-06 A |  | 100% |  |  | 吴联想 | 2h | 2h | 99.12 | 99.12 |
| 100 | 1.7.14 | 小组会议 | manual | 1d | 2021-11-05 A | 2021-11-05 A |  | 100% |  |  | 王义博; 吴联想; 郑航舰 | 1h | 1h | 49.56 | 49.56 |
| 101 | 1.7.15 | 会议纪要撰写 | manual | 1d | 2021-11-05 A | 2021-11-05 A |  | 100% |  |  | 吴联想 | 1h | 1h | 49.56 | 49.56 |
| 102 | 1.7.16 | 总体设计报告预评审 | manual | 1d | 2021-11-10 A | 2021-11-10 A |  | 100% |  |  |  |  |  |  |  |
| 103 | 1.7.17 | 小组会议 | manual | 1d | 2021-11-10 A | 2021-11-10 A |  | 100% |  |  | 王义博; 吴联想; 郑航舰 | 1h | 1h | 49.56 | 49.56 |
| 104 | 1.7.18 | 会议纪要撰写 | manual | 1d | 2021-11-10 A | 2021-11-10 A |  | 100% |  |  | 吴联想 | 1h | 1h | 49.56 | 49.56 |
| 105 | 1.8 | **详细设计报告** |  | 8d? | 2021-11-11 | 2021-11-21 | 86 | 100% | 2021-11-12 | 2021-11-17 |  | 18h | 18h | 892.08 | 892.08 |
| 106 | 1.8.1 | 小组会议 | manual | 1d | 2021-11-12 A | 2021-11-12 A |  | 100% |  |  | 王义博; 吴联想; 郑航舰 | 1h | 1h | 49.56 | 49.56 |
| 107 | 1.8.2 | 会议纪要撰写 | manual | 1d | 2021-11-12 A | 2021-11-12 A |  | 100% |  |  | 吴联想 | 1h | 1h | 49.56 | 49.56 |
| 108 | 1.8.3 | **结构程序设计** |  | 0d | 2021-11-14 A | 2021-11-14 A |  | 100% |  |  |  | 3h | 3h | 148.68 | 148.68 |
| 109 | 1.8.3.1 | PDL语言编写 | manual | 1d | 2021-11-14 A | 2021-11-14 A |  | 100% |  |  | 王义博 | 1h | 1h | 49.56 | 49.56 |
| 110 | 1.8.3.2 | PDL语言编写 | manual | 1d | 2021-11-14 A | 2021-11-14 A |  | 100% |  |  | 吴联想 | 1h | 1h | 49.56 | 49.56 |
| 111 | 1.8.3.3 | PDL语言编写 | manual | 1d | 2021-11-14 A | 2021-11-14 A |  | 100% |  |  | 郑航舰 | 1h | 1h | 49.56 | 49.56 |

| ID | WBS | Task | Type | Duration | Start | Finish | Complete | Actual start | Actual finish | Resources | Work | Actual work | Cost | Actual cost |
| --- | --- | --- | --- | --- | --- | --- | --- | --- | --- | --- | --- | --- | --- | --- |
| 112 | 1.8.4 | **人机界面设计** |  | 0d? | 2021-11-14 A | 2021-11-14 A | 100% |  |  |  | 4h | 4h | 198.24 | 198.24 |
| 113 | 1.8.4.1 | 系统响应时间 | manual | 1d | 2021-11-14 A | 2021-11-14 A | 100% |  |  | 王义博 | 1h | 1h | 49.56 | 49.56 |
| 114 | 1.8.4.2 | **用户帮助设施** |  | 1d? | 2021-11-14 A | 2021-11-14 A | 100% |  |  |  | 1h | 1h | 49.56 | 49.56 |
| 115 | 1.8.4.2.1 | 用户界面原型体现 | manual | 1d | 2021-11-14 A | 2021-11-14 A | 100% |  |  | 郑航舰 | 1h | 1h | 49.56 | 49.56 |
| 116 | 1.8.4.3 | **出错信息处理** |  | 1d | 2021-11-14 A | 2021-11-14 A | 100% |  |  |  | 1h | 1h | 49.56 | 49.56 |
| 117 | 1.8.4.3.1 | 用户界面原型体现 | manual | 1d | 2021-11-14 A | 2021-11-14 A | 100% |  |  | 郑航舰 | 1h | 1h | 49.56 | 49.56 |
| 118 | 1.8.4.4 | 命令交互 | manual | 1d | 2021-11-14 A | 2021-11-14 A | 100% |  |  | 王义博 | 1h | 1h | 49.56 | 49.56 |
| 119 | 1.8.5 | 数据库相关设计 | manual | 1d | 2021-11-14 A | 2021-11-14 A | 100% |  |  | 王义博; 吴联想 | 2h | 2h | 99.12 | 99.12 |
| 120 | 1.8.6 | 业务流图 | manual | 1d | 2021-11-14 A | 2021-11-14 A | 100% |  |  | 王义博 | 2h | 2h | 99.12 | 99.12 |
| 121 | 1.8.7 | PPT制作 | manual | 1d | 2021-11-14 A | 2021-11-14 A | 100% |  |  | 王义博 | 2h | 2h | 99.12 | 99.12 |
| 122 | 1.8.8 | 项目计划书WBS小修订 | manual | 1d | 2021-11-14 A | 2021-11-14 A | 100% |  |  | 郑航舰 | 0.5h | 0.5h | 24.78 | 24.78 |
| 123 | 1.8.9 | 详细设计预评审 | manual | 1d | 2021-11-17 A | 2021-11-17 A | 100% |  |  |  |  |  |  |  |
| 124 | 1.8.10 | project更新 | manual | 1d | 2021-11-14 A | 2021-11-14 A | 100% |  |  | 郑航舰 | 0.5h | 0.5h | 24.78 | 24.78 |
| 125 | 1.8.11 | 小组会议 | manual | 1d | 2021-11-17 A | 2021-11-17 A | 100% |  |  | 王义博; 吴联想; 郑航舰 | 1h | 1h | 49.56 | 49.56 |
| 126 | 1.8.12 | 会议纪要撰写 | manual | 1d | 2021-11-17 A | 2021-11-17 A | 100% |  |  | 吴联想 | 1h | 1h | 49.56 | 49.56 |
| 127 | 1.9 | **总体设计及详细设计修订+翻转PPT1** |  | 8d? | 2021-11-18 | 2021-11-28 | 100% | 2021-11-19 | 2021-11-24 |  | 13h | 13h | 644.28 | 644.28 |
| 128 | 1.9.1 | 小组会议 | manual | 1d | 2021-11-19 A | 2021-11-19 A | 100% |  |  | 吴联想; 王义博; 郑航舰 | 1h | 1h | 49.56 | 49.56 |
| 129 | 1.9.2 | 会议纪要撰写 | manual | 1d | 2021-11-19 A | 2021-11-19 A | 100% |  |  | 吴联想 | 1h | 1h | 49.56 | 49.56 |
| 130 | 1.9.3 | 小组会议 | manual | 1d | 2021-11-24 A | 2021-11-24 A | 100% |  |  | 王义博; 郑航舰; 吴联想 | 1h | 1h | 49.56 | 49.56 |
| 131 | 1.9.4 | 会议纪要撰写 | manual | 1d | 2021-11-24 A | 2021-11-24 A | 100% |  |  | 吴联想 | 1h | 1h | 49.56 | 49.56 |
| 132 | 1.9.5 | 前后端代码库基础建立 | manual | 1d | 2021-11-19 A | 2021-11-19 A | 100% |  |  | 吴联想 | 2h | 2h | 99.12 | 99.12 |
| 133 | 1.9.6 | 用户界面原型修改 | manual | 1d | 2021-11-21 A | 2021-11-21 A | 100% |  |  | 郑航舰 | 1h | 1h | 49.56 | 49.56 |
| 134 | 1.9.7 | 管理员界面原型修改 | manual | 1d | 2021-11-21 A | 2021-11-21 A | 100% |  |  | 王义博 | 1h | 1h | 49.56 | 49.56 |
| 135 | 1.9.8 | **详细设计模块分配（含PDL编写）** |  | 1d? | 2021-11-19 A | 2021-11-19 A | 100% |  |  |  | 3h | 3h | 148.68 | 148.68 |
| 136 | 1.9.8.1 | 注册登录+用户中心 | manual | 1d | 2021-11-19 A | 2021-11-19 A | 100% |  |  | 吴联想 | 1h | 1h | 49.56 | 49.56 |
| 137 | 1.9.8.2 | 用户模块除了用户中心 | manual | 1d | 2021-11-19 A | 2021-11-19 A | 100% |  |  | 王义博 | 1h | 1h | 49.56 | 49.56 |
| 138 | 1.9.8.3 | 管理员模块 | manual | 1d | 2021-11-19 A | 2021-11-19 A | 100% |  |  | 郑航舰 | 1h | 1h | 49.56 | 49.56 |
| 139 | 1.9.9 | PPT修改 | manual | 1d | 2021-11-21 A | 2021-11-21 A | 100% |  |  | 王义博 | 1h | 1h | 49.56 | 49.56 |
| 140 | 1.9.10 | 详细设计修订 | manual | 1d | 2021-11-21 A | 2021-11-21 A | 100% |  |  | 郑航舰 | 1h | 1h | 49.56 | 49.56 |
| 141 | 1.9.11 | 总体设计及详细设计正式评审 | manual | 1d | 2021-11-24 A | 2021-11-24 A | 100% |  |  |  |  |  |  |  |

| ID | WBS | Task | Type | Duration | Start | Finish | Complete | Actual start | Resources | Work | Actual work | Cost | Actual cost |
| --- | --- | --- | --- | --- | --- | --- | --- | --- | --- | --- | --- | --- | --- |
| 142 | 1.10 | **代码清单+测试用例+翻转PPT2** |  | 5d? | 2021-11-25 | 2021-12-01 A | 100% | 2021-11-19 |  | 203h | 203h | 10,060.68 | 10,060.68 |
| 143 | 1.10.1 | **具体实现模块** |  | 8d | 2021-11-22 | 2021-12-01 A | 100% | 2021-11-19 |  | 195h | 195h | 9,664.2 | 9,664.2 |
| 144 | 1.10.1.1 | 注册登录+用户中心 | manual | 9d | 2021-11-19 A | 2021-12-01 A | 100% |  | 王义博 | 65h | 65h | 3,221.4 | 3,221.4 |
| 145 | 1.10.1.2 | 用户模块除了用户中心 | manual | 9d | 2021-11-19 A | 2021-12-01 A | 100% |  | 郑航舰 | 65h | 65h | 3,221.4 | 3,221.4 |
| 146 | 1.10.1.3 | 管理员模块 | manual | 9d | 2021-11-19 A | 2021-12-01 A | 100% |  | 吴联想 | 65h | 65h | 3,221.4 | 3,221.4 |
| 147 | 1.10.2 | 小组会议 | manual | 1d | 2021-11-26 A | 2021-11-26 A | 100% |  | 王义博; 吴联想; 郑航舰 | 1h | 1h | 49.56 | 49.56 |
| 148 | 1.10.3 | 会议纪要 撰写 | manual | 1d | 2021-11-26 A | 2021-11-26 A | 100% |  | 吴联想 | 1h | 1h | 49.56 | 49.56 |
| 149 | 1.10.4 | 原型（添加认领功能） | manual | 1d | 2021-11-25 A | 2021-11-25 A | 100% |  | 郑航舰 | 2h | 2h | 99.12 | 99.12 |
| 150 | 1.10.5 | 代码清单 | manual | 1d | 2021-11-26 A | 2021-11-26 A | 100% |  | 郑航舰; 王义博; 吴联想 | 1h | 1h | 49.56 | 49.56 |
| 151 | 1.10.6 | PPT制作 | manual | 1d | 2021-11-28 A | 2021-11-28 A | 100% |  | 王义博 | 2h | 2h | 99.12 | 99.12 |
| 152 | 1.10.7 | 实现模块评审 | manual | 1d | 2021-12-01 A | 2021-12-01 A | 100% |  |  |  |  |  |  |
| 153 | 1.10.8 | 小组会议 | manual | 1d | 2021-12-01 A | 2021-12-01 A | 100% |  | 王义博; 吴联想; 郑航舰 | 1h | 1h | 49.56 | 49.56 |
| 154 | 1.11 | **系统测试报告** |  | 5d? | 2021-12-02 | 2021-12-08 A | 100% | 2021-11-29 |  | 148h | 148h | 7,334.88 | 7,334.88 |
| 155 | 1.11.1 | 翻转PPT2 | manual | 1d | 2021-12-08 A | 2021-12-08 A | 100% |  | 王义博 | 2h | 2h | 99.12 | 99.12 |
| 156 | 1.11.2 | 小组会议 | manual | 1d | 2021-12-03 A | 2021-12-03 A | 100% |  | 王义博; 吴联想; 郑航舰 | 1h | 1h | 49.56 | 49.56 |
| 157 | 1.11.3 | 会议纪要撰写 | manual | 1d | 2021-12-03 A | 2021-12-03 A | 100% |  | 吴联想 | 1h | 1h | 49.56 | 49.56 |
| 158 | 1.11.4 | 小组会议 | manual | 1d | 2021-12-05 A | 2021-12-05 A | 100% |  | 王义博; 吴联想; 郑航舰 | 1h | 1h | 49.56 | 49.56 |
| 159 | 1.11.5 | 会议纪要撰写 | manual | 1d | 2021-12-05 A | 2021-12-05 A | 100% |  | 吴联想 | 1h | 1h | 49.56 | 49.56 |
| 160 | 1.11.6 | **功能测试模块** |  | 6d | 2021-11-29 A | 2021-12-05 A | 100% |  |  | 123h | 123h | 6,095.88 | 6,095.88 |
| 161 | 1.11.6.1 | 注册登录+用户中心 | manual | 6d | 2021-11-29 A | 2021-12-05 A | 100% |  | 郑航舰 | 41h | 41h | 2,031.96 | 2,031.96 |
| 162 | 1.11.6.2 | 用户模块除了用户中心 | manual | 6d | 2021-11-29 A | 2021-12-05 A | 100% |  | 吴联想 | 41h | 41h | 2,031.96 | 2,031.96 |
| 163 | 1.11.6.3 | 管理员模块 | manual | 6d | 2021-11-29 A | 2021-12-05 A | 100% |  | 王义博 | 41h | 41h | 2,031.96 | 2,031.96 |
| 164 | 1.11.7 | 继续完成代码实现部分 | manual | 6d | 2021-12-01 A | 2021-12-08 A | 100% |  | 王义博; 吴联想; 郑航舰 | 16h | 16h | 792.96 | 792.96 |
| 165 | 1.11.8 | 接口文档编写 | manual | 1d | 2021-12-08 A | 2021-12-08 A | 100% |  | 王义博; 吴联想; 郑航舰 | 2h | 2h | 99.12 | 99.12 |
| 166 | 1.11.9 | 小组会议 | manual | 1d | 2021-12-08 A | 2021-12-08 A | 100% |  | 王义博; 吴联想; 郑航舰 | 1h | 1h | 49.56 | 49.56 |
| 167 | 1.11.10 | 预评审 | manual | 1d | 2021-12-08 A | 2021-12-08 A | 100% |  |  |  |  |  |  |

| ID | WBS | Task | Type | Duration | Start | Finish | Complete | Remaining | Actual start | Resources | Work | Actual work | Cost | Actual cost |
| --- | --- | --- | --- | --- | --- | --- | --- | --- | --- | --- | --- | --- | --- | --- |
| 168 | 1.12 | **测试报告修订** |  | 8d | 2021-12-06 | 2021-12-15 A | 100% |  | 2021-12-08 |  | 31h | 31h | 1,536.36 | 1,536.36 |
| 169 | 1.12.1 | 小组会议 | manual | 1d | 2021-12-08 A | 2021-12-08 A | 100% |  |  | 王义博; 吴联想; 郑航舰 | 1h | 1h | 49.56 | 49.56 |
| 170 | 1.12.2 | 小组会议纪要撰写 | manual | 1d | 2021-12-08 A | 2021-12-08 A | 100% |  |  | 吴联想 | 1h | 1h | 49.56 | 49.56 |
| 171 | 1.12.3 | 小组会议 | manual | 1d | 2021-12-10 A | 2021-12-10 A | 100% |  |  | 王义博; 吴联想; 郑航舰 | 1h | 1h | 49.56 | 49.56 |
| 172 | 1.12.4 | 小组会议纪要撰写 | manual | 1d | 2021-12-10 A | 2021-12-10 A | 100% |  |  | 吴联想 | 1h | 1h | 49.56 | 49.56 |
| 173 | 1.12.5 | PPT制作 | manual | 1d | 2021-12-12 A | 2021-12-12 A | 100% |  |  | 王义博 | 2h | 2h | 99.12 | 99.12 |
| 174 | 1.12.6 | 用户模块继续完成 | manual | 1d | 2021-12-12 A | 2021-12-12 A | 100% |  |  | 郑航舰 | 8h | 8h | 396.48 | 396.48 |
| 175 | 1.12.7 | 邮箱验证继续完成 | manual | 1d | 2021-12-12 A | 2021-12-12 A | 100% |  |  | 王义博 | 8h | 8h | 396.48 | 396.48 |
| 176 | 1.12.8 | 部分单元测试代码编写 | manual | 0.25d | 2021-12-12 A | 2021-12-12 A | 100% |  |  | 吴联想 | 2h | 2h | 99.12 | 99.12 |
| 177 | 1.12.9 | 测试文档修订 | manual | 1d | 2021-12-12 A | 2021-12-12 A | 100% |  |  | 郑航舰 | 0.5h | 0.5h | 24.78 | 24.78 |
| 178 | 1.12.10 | project更新 | manual | 1d | 2021-12-12 A | 2021-12-12 A | 100% |  |  | 郑航舰 | 0.5h | 0.5h | 24.78 | 24.78 |
| 179 | 1.12.11 | 测试报告修订预评审 | manual | 1d | 2021-12-15 A | 2021-12-15 A | 100% |  |  |  |  |  |  |  |
| 180 | 1.12.12 | 用户手册 | manual | 1d | 2021-12-15 A | 2021-12-15 A | 100% |  |  | 王义博 | 1h | 1h | 49.56 | 49.56 |
| 181 | 1.12.13 | 程序清单 | manual | 1d | 2021-12-15 A | 2021-12-15 A | 100% |  |  | 王义博; 吴联想; 郑航舰 | 3h | 3h | 148.68 | 148.68 |
| 182 | 1.12.14 | 单元测试代码编写 | manual | 1d | 2021-12-15 A | 2021-12-15 A | 100% |  |  | 郑航舰 | 1h | 1h | 49.56 | 49.56 |
| 183 | 1.12.15 | 单元测试代码编写 | manual | 1d | 2021-12-15 A | 2021-12-15 A | 100% |  |  | 王义博 | 1h | 1h | 49.56 | 49.56 |
| 184 | 1.13 | **项目总结报告，总评审PPT** |  | 10d? | 2021-12-16 | 2021-12-29 | 97% | 0.33d? | 2021-12-15 |  | 46h | 46h | 2,279.76 | 2,279.76 |
| 185 | 1.13.1 | 小组会议 | manual | 1d | 2021-12-15 A | 2021-12-15 A | 100% |  |  | 王义博; 吴联想; 郑航舰 | 1h | 1h | 49.56 | 49.56 |
| 186 | 1.13.2 | 小组会议报告撰写 | manual | 1d | 2021-12-15 A | 2021-12-15 A | 100% |  |  | 吴联想 | 1h | 1h | 49.56 | 49.56 |
| 187 | 1.13.3 | 小组会议 | manual | 1d | 2021-12-17 A | 2021-12-17 A | 100% |  |  | 王义博; 吴联想; 郑航舰 | 1h | 1h | 49.56 | 49.56 |
| 188 | 1.13.4 | 小组会议报告撰写 | manual | 1d | 2021-12-17 A | 2021-12-17 A | 100% |  |  | 吴联想 | 1h | 1h | 49.56 | 49.56 |
| 189 | 1.13.5 | 代码优化 | manual | 4d | 2021-12-18 A | 2021-12-22 A | 100% |  |  | 王义博 | 8h | 8h | 396.48 | 396.48 |
| 190 | 1.13.6 | 代码优化 | manual | 4d | 2021-12-18 A | 2021-12-22 A | 100% |  |  | 郑航舰 | 8h | 8h | 396.48 | 396.48 |
| 191 | 1.13.7 | 项目部署 | manual | 4d | 2021-12-18 A | 2021-12-22 A | 100% |  |  | 吴联想 | 8h | 8h | 396.48 | 396.48 |
| 192 | 1.13.8 | 测试报告修订 | manual | 1d | 2021-12-22 A | 2021-12-22 A | 100% |  |  | 郑航舰 | 1h | 1h | 49.56 | 49.56 |
| 193 | 1.13.9 | 项目开发总结修订 | manual | 1d | 2021-12-22 A | 2021-12-22 A | 100% |  |  | 郑航舰 | 1h | 1h | 49.56 | 49.56 |
| 194 | 1.13.10 | PPT制作 | manual | 1d | 2021-12-22 A | 2021-12-22 A | 100% |  |  | 王义博 | 2h | 2h | 99.12 | 99.12 |
| 195 | 1.13.11 | 集成测试 | manual | 1d | 2021-12-22 A | 2021-12-22 A | 100% |  |  | 吴联想 | 2h | 2h | 99.12 | 99.12 |
| 196 | 1.13.12 | 集成测试 | manual | 1d | 2021-12-22 A | 2021-12-22 A | 100% |  |  | 王义博 | 2h | 2h | 99.12 | 99.12 |
| 197 | 1.13.13 | 系统测试 | manual | 1d | 2021-12-22 A | 2021-12-22 A | 100% |  |  | 郑航舰 | 2h | 2h | 99.12 | 99.12 |
| 198 | 1.13.14 | 详细设计文档修订 | manual | 1d | 2021-12-22 A | 2021-12-22 A | 100% |  |  | 郑航舰 | 1h | 1h | 49.56 | 49.56 |
| 199 | 1.13.15 | 小组会议 | manual | 1d | 2021-12-24 A | 2021-12-24 A | 100% |  |  | 王义博; 吴联想; 郑航舰 | 1h | 1h | 49.56 | 49.56 |
| 200 | 1.13.16 | 会议纪要撰写 | manual | 1d | 2021-12-24 A | 2021-12-24 A | 100% |  |  | 吴联想 | 1h | 1h | 49.56 | 49.56 |
| 201 | 1.13.17 | 系统测试 | manual | 1d | 2021-12-26 A | 2021-12-26 A | 100% |  |  | 郑航舰 | 1h | 1h | 49.56 | 49.56 |
| 202 | 1.13.18 | 集成测试 | manual | 1d | 2021-12-26 A | 2021-12-26 A | 100% |  |  | 王义博 | 1h | 1h | 49.56 | 49.56 |
| 203 | 1.13.19 | 项目计划书修订 | manual | 1d | 2021-12-26 A | 2021-12-26 A | 100% |  |  | 郑航舰 | 1h | 1h | 49.56 | 49.56 |
| 204 | 1.13.20 | PPT制作 | manual | 1d | 2021-12-26 A | 2021-12-26 A | 100% |  |  | 王义博 | 2h | 2h | 99.12 | 99.12 |
| 205 | 1.13.21 | 项目总评审 | manual | 1d | 2021-12-29 | 2021-12-29 |  |  |  |  |  |  |  |  |
| 206 | 1.14 | 课程作业评审 | manual | 1d | 2022-01-01 | 2022-01-01 |  |  |  | 王义博; 吴联想; 郑航舰 | 1h |  | 49.56 |  |
